# Project Schedule

How a schedule from MS Project changed from version to version. A marks actual dates.

## Version 1 (saved 2018-02-21)

Note of the change: Adding gantt chart schedule

| ID | WBS | Task | Duration | Start | Finish | Total float |
| --- | --- | --- | --- | --- | --- | --- |
| 1 | 1 | **Air Hockey Robot** | 155d | 2018-01-15 | 2018-08-17 |  |
| 2 | 1.1 | **System Engineering** | 1d? | 2018-01-15 | 2018-01-15 | 154d |
| 3 |  | Requirements Freeze | 0d | 2018-01-15 | 2018-01-15 | 155d |
| 4 |  | Manual Control | 0d | 2018-01-15 | 2018-01-15 | 155d |
| 5 |  | Defense | 0d | 2018-01-15 | 2018-01-15 | 155d |
| 6 |  | Offense | 0d | 2018-01-15 | 2018-01-15 | 155d |
| 7 |  | Fully Integrated | 0d | 2018-01-15 | 2018-01-15 | 155d |
| 8 |  | Validation Complete | 0d | 2018-01-15 | 2018-01-15 | 155d |
| 9 |  | Design | 1d? | 2018-01-15 | 2018-01-15 | 154d |
| 10 |  | Integration | 1d? | 2018-01-15 | 2018-01-15 | 154d |
| 11 |  | Validation | 1d? | 2018-01-15 | 2018-01-15 | 154d |
| 12 | 1.2 | **Master Controller** | 1d? | 2018-01-15 | 2018-01-15 | 154d |
| 13 |  | Trajectory Prediction | 1d? | 2018-01-15 | 2018-01-15 | 154d |
| 14 |  | Supervisory Control | 1d? | 2018-01-15 | 2018-01-15 | 154d |
| 15 |  | Data Logging | 1d? | 2018-01-15 | 2018-01-15 | 154d |
| 16 |  | Control Strategy | 1d? | 2018-01-15 | 2018-01-15 | 154d |
| 17 | 1.3 | **Paddle Controller** | 1d? | 2018-01-15 | 2018-01-15 | 154d |
| 18 |  | Actuators | 1d? | 2018-01-15 | 2018-01-15 | 154d |
| 19 |  | Position Control | 1d? | 2018-01-15 | 2018-01-15 | 154d |
| 20 |  | Velocity Control | 1d? | 2018-01-15 | 2018-01-15 | 154d |
| 21 |  | Sensors | 1d? | 2018-01-15 | 2018-01-15 | 154d |
| 22 |  | Calibration and Diagnostic Routines | 1d? | 2018-01-15 | 2018-01-15 | 154d |
| 23 |  | Safety Control | 1d? | 2018-01-15 | 2018-01-15 | 154d |
| 24 |  | End of Travel Protection | 1d? | 2018-01-15 | 2018-01-15 | 154d |
| 25 | 1.4 | **Puck Tracker** | 1d? | 2018-01-15 | 2018-01-15 | 154d |
| 26 |  | Object Detection | 1d? | 2018-01-15 | 2018-01-15 | 154d |
| 27 |  | Object Localization | 1d? | 2018-01-15 | 2018-01-15 | 154d |
| 28 |  | Velocity Calculation | 1d? | 2018-01-15 | 2018-01-15 | 154d |
| 29 |  | Calibration & Diagnostic Routines | 1d? | 2018-01-15 | 2018-01-15 | 154d |
| 30 | 1.5 | **User Interface** | 1d? | 2018-01-15 | 2018-01-15 | 154d |
| 31 |  | Visualization | 1d? | 2018-01-15 | 2018-01-15 | 154d |
| 32 |  | Manual Control | 1d? | 2018-01-15 | 2018-01-15 | 154d |
| 33 |  | Game Interface | 1d? | 2018-01-15 | 2018-01-15 | 154d |
| 34 |  | Diagnostics Interface | 1d? | 2018-01-15 | 2018-01-15 | 154d |

## Version 2 (saved 2018-02-22)

Note of the change: Updated P S&P

Last finish stays 2018-08-17.

Added:

| ID | Task | Duration | Start | Finish | Predecessors | Constraint |
| --- | --- | --- | --- | --- | --- | --- |
| 9 | System Interface Design | 2w | 2018-03-05 | 2018-03-16 |  | start no earlier than 2018-03-05 |
| 11 | Low-Speed Prototype Design & Integration | 50d | 2018-01-15 | 2018-03-23 |  | finish no earlier than 2018-03-23 |
| 13 | High-Speed Electro-Mechanical System Integration | 30d | 2018-03-19 | 2018-04-27 |  | finish no earlier than 2018-04-27 |
| 14 | Embedded Controller Design | 20d | 2018-03-19 | 2018-04-13 |  | finish no earlier than 2018-04-13 |
| 15 | Embedded Controller Integration | 3w | 2018-04-16 | 2018-05-04 | 14 |  |
| 22 | Hardware Design | 3w | 2018-03-05 | 2018-03-23 |  | start no earlier than 2018-03-05 |

Removed: 9 Design; 10 Integration; 11 Validation; 21 Sensors

Changed:

| ID | Task | Start | Finish | Duration | Total float | Predecessors | Other |
| --- | --- | --- | --- | --- | --- | --- | --- |
| 2 | **System Engineering** | 2018-01-15 → 2018-03-02 (+46d) | 2018-01-15 → 2018-08-03 (+200d) | 1d? → 110d | 154d → 11d |  | resources none → All |
| 3 | Requirements Freeze | 2018-01-15 → 2018-03-02 (+46d) | 2018-01-15 → 2018-03-02 (+46d) |  | 155d → 196d |  | constraint none → start no earlier than 2018-03-02 |
| 4 | Manual Control | 2018-01-15 → 2018-03-16 (+60d) | 2018-01-15 → 2018-03-16 (+60d) |  | 155d → 186d |  | constraint none → start no earlier than 2018-03-16 |
| 5 | Defense | 2018-01-15 → 2018-04-20 (+95d) | 2018-01-15 → 2018-04-20 (+95d) |  | 155d → 86d |  | constraint none → start no earlier than 2018-04-20 |
| 6 | Offense | 2018-01-15 → 2018-06-22 (+158d) | 2018-01-15 → 2018-06-22 (+158d) |  | 155d → 41d |  | constraint none → start no earlier than 2018-06-22 |
| 7 | Fully Integrated | 2018-01-15 → 2018-07-20 (+186d) | 2018-01-15 → 2018-07-20 (+186d) |  | 155d → 21d |  | constraint none → start no earlier than 2018-07-20 |
| 8 | Validation Complete | 2018-01-15 → 2018-08-03 (+200d) | 2018-01-15 → 2018-08-03 (+200d) |  | 155d → 86d |  | constraint none → start no earlier than 2018-08-03 |
| 10 | **Paddle Controller** |  | 2018-01-15 → 2018-05-18 (+123d) | 1d? → 90d | 154d → 65d |  | resources none → Thomas |
| 12 | High-Speed Electro-Mechanical System Design |  | 2018-01-15 → 2018-03-30 (+74d) | 1d? → 55d | 154d → 175d |  | was named Actuators; constraint none → finish no earlier than 2018-03-30 |
| 16 | Position Control | 2018-01-15 → 2018-03-05 (+49d) | 2018-01-15 → 2018-03-16 (+60d) | 1d? → 2w | 154d → 80d |  | constraint none → start no earlier than 2018-03-05 |
| 17 | Velocity Control | 2018-01-15 → 2018-03-19 (+63d) | 2018-01-15 → 2018-04-27 (+102d) | 1d? → 6w | 154d → 155d | none → 16 |  |
| 18 | Calibration and Diagnostic Development | 2018-01-15 → 2018-05-07 (+112d) | 2018-01-15 → 2018-05-11 (+116d) | 1d? → 1w | 154d → 70d |  | was named Calibration and Diagnostic Routines; constraint none → start no earlier than 2018-05-07 |
| 19 | Safety Control | 2018-01-15 → 2018-05-14 (+119d) | 2018-01-15 → 2018-05-18 (+123d) | 1d? → 1w | 154d → 140d | none → 20 |  |
| 20 | End of Travel Protection | 2018-01-15 → 2018-05-07 (+112d) | 2018-01-15 → 2018-05-11 (+116d) | 1d? → 1w | 154d → 140d | none → 15 |  |
| 21 | **Puck Tracker** | 2018-01-15 → 2018-03-05 (+49d) | 2018-01-15 → 2018-04-27 (+102d) | 1d? → 40d | 154d → 5d |  | resources none → David |
| 23 | Object Detection | 2018-01-15 → 2018-03-05 (+49d) | 2018-01-15 → 2018-03-16 (+60d) | 1d? → 2w | 154d → 5d |  | constraint none → start no earlier than 2018-03-05 |
| 24 | Object Localization | 2018-01-15 → 2018-03-19 (+63d) | 2018-01-15 → 2018-04-06 (+81d) | 1d? → 3w | 154d → 5d | none → 23 |  |
| 25 | Velocity Calculation | 2018-01-15 → 2018-04-09 (+84d) | 2018-01-15 → 2018-04-13 (+88d) | 1d? → 1w | 154d → 5d | none → 24 |  |
| 26 | Calibration & Diagnostic Routines | 2018-01-15 → 2018-04-16 (+91d) | 2018-01-15 → 2018-04-27 (+102d) | 1d? → 2w | 154d → 155d | none → 25 |  |
| 27 | **Master Controller** | 2018-01-15 → 2018-03-05 (+49d) | 2018-01-15 → 2018-08-10 (+207d) | 1d? → 115d | 154d → 5d |  | resources none → Stan |
| 28 | Trajectory Prediction | 2018-01-15 → 2018-04-16 (+91d) | 2018-01-15 → 2018-04-20 (+95d) | 1d? → 1w | 154d → 5d | none → 25 |  |
| 29 | Supervisory Control | 2018-01-15 → 2018-03-05 (+49d) | 2018-01-15 → 2018-03-23 (+67d) | 1d? → 3w | 154d → 25d |  | constraint none → start no earlier than 2018-03-05 |
| 30 | Data Logging | 2018-01-15 → 2018-03-12 (+56d) | 2018-01-15 → 2018-03-23 (+67d) | 1d? → 2w | 154d → 105d |  | constraint none → start no earlier than 2018-03-12 |
| 31 | Control Strategy | 2018-01-15 → 2018-04-23 (+98d) | 2018-01-15 → 2018-08-10 (+207d) | 1d? → 4mo | 154d → 5d | none → 28, 29 | resources none → Stan; Thomas [50%] |
| 32 | **User Interface** | 2018-01-15 → 2018-03-12 (+56d) | 2018-01-15 → 2018-08-03 (+200d) | 1d? → 105d | 154d → 10d |  | resources none → David |
| 33 | Visualization | 2018-01-15 → 2018-05-07 (+112d) | 2018-01-15 → 2018-05-18 (+123d) | 1d? → 2w | 154d → 65d |  | constraint none → start no earlier than 2018-05-07 |
| 34 | Manual Control | 2018-01-15 → 2018-03-12 (+56d) | 2018-01-15 → 2018-03-16 (+60d) | 1d? → 1w | 154d → 110d |  | constraint none → start no earlier than 2018-03-12 |
| 35 | Game Interface | 2018-01-15 → 2018-05-07 (+112d) | 2018-01-15 → 2018-07-27 (+193d) | 1d? → 3mo | 154d → 15d |  | constraint none → start no earlier than 2018-05-07 |
| 36 | Diagnostics Interface | 2018-01-15 → 2018-03-19 (+63d) | 2018-01-15 → 2018-08-03 (+200d) | 1d? → 5mo | 154d → 10d |  | constraint none → start no earlier than 2018-03-19 |

## Version 3 (saved 2018-02-22)

Note of the change: Adding status report for Week 6

Last finish stays 2018-08-17.

Added:

| ID | Task | Duration | Start | Finish | Constraint |
| --- | --- | --- | --- | --- | --- |
| 28 | System Design | 2w | 2018-03-05 | 2018-03-16 | start no earlier than 2018-03-05 |
| 34 | System Design | 2w | 2018-04-16 | 2018-04-27 | start no earlier than 2018-04-16 |

Changed:

| ID | Task | Other |
| --- | --- | --- |
| 12 | System Design | was named High-Speed Electro-Mechanical System Design |
| 22 | System Design | was named Hardware Design |

## Version 4 (saved 2018-05-14)

Note of the change: Updating planning docs

Last finish stays 2018-08-17.

Removed: 17 Velocity Control

Changed:

| ID | Task | Start | Finish | Duration | Total float | Predecessors | Other |
| --- | --- | --- | --- | --- | --- | --- | --- |
| 10 | **Paddle Controller** |  | 2018-05-18 → 2018-06-29 (+42d) | 90d → 120d | 65d → 35d |  |  |
| 13 | High-Speed Electro-Mechanical System Integration | 2018-03-19 → 2018-04-30 (+42d) | 2018-04-27 → 2018-06-08 (+42d) |  | 80d → 50d |  | constraint finish no earlier than 2018-04-27 → start no earlier than 2018-04-29 |
| 14 | Embedded Controller Design | 2018-03-19 → 2018-04-30 (+42d) | 2018-04-13 → 2018-05-25 (+42d) |  | 65d → 35d |  | constraint finish no earlier than 2018-04-13 → start no earlier than 2018-04-29 |
| 15 | Embedded Controller Integration | 2018-04-16 → 2018-05-28 (+42d) | 2018-05-04 → 2018-06-15 (+42d) |  | 140d → 35d |  |  |
| 17 | Calibration and Diagnostic Development | 2018-05-07 → 2018-06-04 (+28d) | 2018-05-11 → 2018-06-08 (+28d) |  | 70d → 50d |  | constraint start no earlier than 2018-05-07 → start no earlier than 2018-06-03 |
| 18 | Safety Control | 2018-05-14 → 2018-06-25 (+42d) | 2018-05-18 → 2018-06-29 (+42d) |  | 140d → 35d |  |  |
| 19 | End of Travel Protection | 2018-05-07 → 2018-06-18 (+42d) | 2018-05-11 → 2018-06-22 (+42d) |  | 140d → 35d |  |  |
| 20 | **Puck Tracker** |  | 2018-04-27 → 2018-06-15 (+49d) | 40d → 75d |  |  |  |
| 25 | Calibration & Diagnostic Routines | 2018-04-16 → 2018-06-04 (+49d) | 2018-04-27 → 2018-06-15 (+49d) |  | 155d → 45d | 24 → none | constraint none → start no earlier than 2018-06-03 |
| 29 | Supervisory Control | 2018-03-05 → 2018-05-14 (+70d) | 2018-03-23 → 2018-06-01 (+70d) |  | 25d → 55d |  | constraint start no earlier than 2018-03-05 → start no earlier than 2018-05-13 |
| 31 | Control Strategy |  |  |  |  | 28, 29 → 28 |  |
